# Plan de trabajo

Schedule from MS Project, 2013-03-19 to 2013-12-23, A marks actual dates.

## Calendars

- Estándar: Mon-Fri 09:00-13:00, 15:00-19:00; Sat-Sun off.

## Resources

| Resource | Group |
| --- | --- |
| Alejandro Hurtado | QDX |
| Daniel Banda | GB |
| Alejandro Landero | GB |
| Desarrollo Quadrantix | QDX |
| Súper Usuarios GB | GB |
| Carlos Malagón | DS |
| Eduardo Soriano | DS |
| Jesús Mejía | Compras |
| Mónica León | CSC |
| Isaac Aguado | AP |
| Guadalupe Aragón | Document |
| Francisco Monroy | El Globo |
| Rogelio Esquivel | QDX |
| CAP | Proveedor |
| HP | Proveedor |
| Gabriel Kinovisques | Proveedor |
| Arq y Estándares | DS |
| Desarrollos DS | DS |
| Telecom DS | DS |
| r |  |
| Ricardo Díaz | QDX |

## Schedule

| ID | WBS | Task | Type | Duration | Start | Finish | Predecessors | Complete | Remaining | Total slack | Constraint | Resources | Work | Actual work |
| --- | --- | --- | --- | --- | --- | --- | --- | --- | --- | --- | --- | --- | --- | --- |
| 1 | 1 | **Inicio** |  | 1d | 2013-03-19 A | 2013-03-19 A |  | 100% |  |  |  |  |  |  |
| 2 | 1.1 | Kick Off |  | 1d | 2013-03-19 A | 2013-03-19 A |  | 100% |  |  | start no earlier than 2013-03-19 |  |  |  |
| 3 | 2 | **Ejecución** |  | 180d | 2013-03-19 A | 2013-11-25 |  | 82% | 32.62d | 20d |  |  | 14768h | 11040h |
| 4 | 2.1 | **Resguardo XML y validación fiscal** |  | 29.5d | 2013-03-19 A | 2013-04-29 A |  | 100% |  |  |  |  | 2816h | 2816h |
| 5 | 2.1.1 | **Análisis y Diseño** |  | 5.5d | 2013-03-19 A | 2013-03-26 A |  | 100% |  |  |  |  | 248h | 248h |
| 6 | 2.1.1.1 | Definición detallada del alcance de Resguardo XML |  | 1d | 2013-03-19 A | 2013-03-19 A | 2FF | 100% |  |  | start no earlier than 2013-03-19 | Alejandro Hurtado; Carlos Malagón; Daniel Banda; Desarrollo Quadrantix; Eduardo Soriano; Gabriel Kinovisques; Guadalupe Aragón; Isaac Aguado; Jesús Mejía; Mónica León; Rogelio Esquivel; Súper Usuarios GB | 96h | 96h |
| 7 | 2.1.1.2 | Confirmación de mecanismos de recepción de facturas |  | 1d | 2013-03-20 A | 2013-03-20 A | 2FF, 6 | 100% |  |  |  | Alejandro Hurtado; Carlos Malagón; Daniel Banda; Desarrollo Quadrantix; Eduardo Soriano; Gabriel Kinovisques; Guadalupe Aragón; Isaac Aguado; Jesús Mejía; Mónica León; Rogelio Esquivel; Súper Usuarios GB | 96h | 96h |
| 8 | 2.1.1.3 | Revisión de mecanismo interacción SAT |  | 1d | 2013-03-21 A | 2013-03-21 A | 7 | 100% |  |  |  | Alejandro Hurtado; Rogelio Esquivel | 16h | 16h |
| 9 | 2.1.1.4 | Revisión del proceso de validación de resguardo XML |  | 2d | 2013-03-22 A | 2013-03-25 A | 8 | 100% |  |  |  | Alejandro Hurtado; Rogelio Esquivel | 32h | 32h |
| 10 | 2.1.1.5 | Definción de directorios físicos |  | 0.5d | 2013-03-26 A | 2013-03-26 A | 9 | 100% |  |  |  | Alejandro Hurtado; Rogelio Esquivel | 8h | 8h |
| 11 | 2.1.2 | **Desarrollo** |  | 28d | 2013-03-19 A | 2013-04-26 A |  | 100% |  |  |  |  | 1984h | 1984h |
| 12 | 2.1.2.1 | Instalación del ambiente de desarrollo y pruebas |  | 5d | 2013-03-27 A | 2013-04-03 A | 10FS+1d | 100% |  |  |  | Desarrollo Quadrantix; Alejandro Hurtado | 80h | 80h |
| 13 | 2.1.2.2 | Generación de información de catálogos iniciales (Empleados, Proveedores y Estructura Organizacional) |  | 3d | 2013-04-01 A | 2013-04-03 A |  | 100% |  |  | start no earlier than 2013-04-01 | Carlos Malagón; Daniel Banda | 48h | 48h |
| 14 | 2.1.2.3 | Cargas iniciales de catálogos (Empleados, Proveedores y Estructura Organizacional) |  | 2d | 2013-04-04 A | 2013-04-05 A | 13, 20 | 100% |  |  |  | Desarrollo Quadrantix | 16h | 16h |
| 15 | 2.1.2.4 | Implementación adecuaciones Resguardo XML |  | 10d | 2013-03-26 A | 2013-04-09 A | 10 | 100% |  |  |  | Desarrollo Quadrantix | 80h | 80h |
| 16 | 2.1.2.5 | Generación de escenarios de pruebas |  | 4d | 2013-04-01 A | 2013-04-04 A |  | 100% |  |  | start no earlier than 2013-04-01 | Alejandro Landero; Carlos Malagón; Daniel Banda; Eduardo Soriano; Francisco Monroy; Gabriel Kinovisques; Guadalupe Aragón; Isaac Aguado; Jesús Mejía; Mónica León; Súper Usuarios GB | 352h | 352h |
| 17 | 2.1.2.6 | VoBo escenarios de pruebas | milestone | 0d | 2013-04-04 A | 2013-04-04 A | 16 | 100% |  |  |  | Alejandro Landero; Carlos Malagón |  |  |
| 18 | 2.1.2.7 | Integración de catálogos para herramienta |  | 9d | 2013-03-19 A | 2013-03-29 A |  | 100% |  |  | start no earlier than 2013-03-19 | Daniel Banda; Eduardo Soriano; Carlos Malagón | 216h | 216h |
| 19 | 2.1.2.8 | Revisión de catálogos/Validación de info a compartir |  | 1d | 2013-04-01 A | 2013-04-01 A | 18 | 100% |  |  |  | Carlos Malagón; Eduardo Soriano; Arq y Estándares | 24h | 24h |
| 20 | 2.1.2.9 | Entrega de catálogos a Quadrantix | milestone | 0d | 2013-04-01 A | 2013-04-01 A | 19 | 100% |  |  |  | Carlos Malagón |  |  |
| 21 | 2.1.2.10 | Preparación de comunicado para personal interno |  | 15d | 2013-03-19 A | 2013-04-08 A |  | 100% |  |  | start no earlier than 2013-03-19 | Alejandro Landero; Carlos Malagón; Daniel Banda; Eduardo Soriano; Francisco Monroy; Guadalupe Aragón; Isaac Aguado; Jesús Mejía; Mónica León | 1080h | 1080h |
| 22 | 2.1.2.11 | VoBo a comunicado | milestone | 0d | 2013-04-08 A | 2013-04-08 A | 21 | 100% |  |  |  | Alejandro Landero |  |  |
| 23 | 2.1.2.12 | Confirmación de comunicado a enviar |  | 5d | 2013-04-09 A | 2013-04-15 A | 22 | 100% |  |  |  | Alejandro Landero | 40h | 40h |
| 24 | 2.1.2.13 | Comunicado enviado | milestone | 0d | 2013-04-26 A | 2013-04-26 A | 23 | 100% |  |  | start no earlier than 2013-04-26 |  |  |  |
| 25 | 2.1.2.14 | Instalación del ambiente de producción (qdx) |  | 3d | 2013-04-05 A | 2013-04-09 A | 12FS+1d | 100% |  |  | finish no earlier than 2013-04-09 | Desarrollo Quadrantix; Alejandro Hurtado | 48h | 48h |

| ID | WBS | Task | Type | Duration | Start | Finish | Predecessors | Complete | Remaining | Total slack | Resources | Work | Actual work |
| --- | --- | --- | --- | --- | --- | --- | --- | --- | --- | --- | --- | --- | --- |
| 26 | 2.1.3 | **Pruebas** |  | 5d | 2013-04-09 A | 2013-04-16 A |  | 100% |  |  |  | 272h | 272h |
| 27 | 2.1.3.1 | Pruebas de proceso de Validación |  | 1d | 2013-04-09 A | 2013-04-10 A | 15, 250 | 100% |  |  | Daniel Banda; Eduardo Soriano; Gabriel Kinovisques; Guadalupe Aragón; Isaac Aguado; Jesús Mejía; Mónica León; Rogelio Esquivel | 64h | 64h |
| 28 | 2.1.3.2 | Pruebas de Administración de Facturas |  | 1d | 2013-04-10 A | 2013-04-11 A | 27 | 100% |  |  | Daniel Banda; Eduardo Soriano; Gabriel Kinovisques; Guadalupe Aragón; Isaac Aguado; Jesús Mejía; Mónica León; Rogelio Esquivel | 64h | 64h |
| 29 | 2.1.3.3 | Ajustes de observaciones durante las pruebas |  | 2d | 2013-04-11 A | 2013-04-15 A | 28 | 100% |  |  | Daniel Banda; Eduardo Soriano; Gabriel Kinovisques; Guadalupe Aragón; Isaac Aguado; Jesús Mejía; Mónica León; Rogelio Esquivel | 128h | 128h |
| 30 | 2.1.3.4 | Promoción de Cambios al ambiente de producción (qdx) |  | 1d | 2013-04-15 A | 2013-04-16 A | 29 | 100% |  |  | Alejandro Hurtado; Desarrollo Quadrantix | 16h | 16h |
| 31 | 2.1.3.5 | Go Live - Resguardo XML | milestone | 0d | 2013-04-16 A | 2013-04-16 A | 30 | 100% |  |  | Alejandro Hurtado |  |  |
| 32 | 2.1.4 | **Go Live Resguardo XML** |  | 12d | 2013-04-11 A | 2013-04-29 A |  | 100% |  |  |  | 312h | 312h |
| 33 | 2.1.4.1 | Confirmación proveedores y operación arranque resguardo |  | 1d | 2013-04-11 A | 2013-04-12 A | 28 | 100% |  |  | Jesús Mejía; Daniel Banda; Alejandro Landero | 24h | 24h |
| 34 | 2.1.4.2 | Arranque bloque 1 proveedores para resguardo |  | 3d | 2013-04-16 A | 2013-04-19 A | 33, 31 | 100% |  |  | Daniel Banda; Alejandro Landero; Carlos Malagón; Eduardo Soriano | 96h | 96h |
| 35 | 2.1.4.3 | Arranque bloque 2 proveedores para resguardo |  | 3d | 2013-04-19 A | 2013-04-24 A | 34 | 100% |  |  | Daniel Banda; Alejandro Landero; Carlos Malagón; Eduardo Soriano | 96h | 96h |
| 36 | 2.1.4.4 | Arranque proveedores restantes para resguardo |  | 3d | 2013-04-24 A | 2013-04-29 A | 35 | 100% |  |  | Daniel Banda; Alejandro Landero; Carlos Malagón; Eduardo Soriano | 96h | 96h |
| 37 | 2.1.4.5 | Operación 100% en resguardo XML | milestone | 0d | 2013-04-29 A | 2013-04-29 A | 36 | 100% |  |  | Alejandro Landero |  |  |
| 38 | 2.2 | **Facturas Órdenes de Compra/Máximo/GC/NC** |  | 133.88d | 2013-04-16 A | 2013-10-21 |  | 83% | 22.97d | 45.62d |  | 5920h | 5016h |
| 39 | 2.2.1 | **Análisis y Diseño** |  | 55d | 2013-04-16 A | 2013-07-02 A |  | 100% |  |  |  | 2976h | 2976h |
| 40 | 2.2.1.1 | Confirmación de modelo de operación |  | 5d | 2013-04-16 A | 2013-04-23 A | 2FF, 31 | 100% |  |  | Alejandro Hurtado; Carlos Malagón; Daniel Banda; Desarrollo Quadrantix; Eduardo Soriano | 200h | 200h |
| 41 | 2.2.1.2 | **Identificación de adecuaciones y personalizaciones** |  | 3d | 2013-04-23 A | 2013-04-26 A |  | 100% |  |  |  | 48h | 48h |
| 42 | 2.2.1.2.1 | Ubicación del RFC |  | 0.5d | 2013-04-23 A | 2013-04-23 A | 40 | 100% |  |  | Alejandro Hurtado; Desarrollo Quadrantix | 8h | 8h |
| 43 | 2.2.1.2.2 | Datos adicionales del Match |  | 0.5d | 2013-04-24 A | 2013-04-24 A | 42 | 100% |  |  | Alejandro Hurtado; Desarrollo Quadrantix | 8h | 8h |
| 44 | 2.2.1.2.3 | Código de impuestos |  | 0.5d | 2013-04-24 A | 2013-04-24 A | 43 | 100% |  |  | Alejandro Hurtado; Desarrollo Quadrantix | 8h | 8h |
| 45 | 2.2.1.2.4 | Funcionalidad de FACEL EBS para migrar a FACEL Open |  | 1.5d | 2013-04-25 A | 2013-04-26 A | 44 | 100% |  |  | Alejandro Hurtado; Desarrollo Quadrantix | 24h | 24h |
| 46 | 2.2.1.3 | **Revisión de los catálogos e información del ERP que interactua con FACEL OC+Máximo** |  | 7d | 2013-04-26 A | 2013-05-07 A |  | 100% |  |  |  | 368h | 368h |
| 47 | 2.2.1.3.1 | Unidades Operativas |  | 2d | 2013-04-26 A | 2013-04-30 A | 45, 20 | 100% |  |  | Alejandro Hurtado; Desarrollo Quadrantix | 32h | 32h |
| 48 | 2.2.1.3.2 | Catálogo de Proveedores (RFC) |  | 2d | 2013-04-26 A | 2013-04-30 A | 45 | 100% |  |  | Alejandro Hurtado; Desarrollo Quadrantix | 32h | 32h |
| 49 | 2.2.1.3.3 | Vendor Sites |  | 2d | 2013-04-26 A | 2013-04-30 A | 45 | 100% |  |  | Alejandro Hurtado; Desarrollo Quadrantix | 32h | 32h |
| 50 | 2.2.1.3.4 | Ordenes de compra |  | 2d | 2013-04-26 A | 2013-04-30 A | 45 | 100% |  |  | Alejandro Hurtado; Desarrollo Quadrantix | 32h | 32h |
| 51 | 2.2.1.3.5 | Recibos de Material |  | 2d | 2013-04-26 A | 2013-04-30 A | 45 | 100% |  |  | Alejandro Hurtado; Desarrollo Quadrantix | 32h | 32h |
| 52 | 2.2.1.3.6 | Usuarios |  | 2d | 2013-04-26 A | 2013-04-30 A | 45 | 100% |  |  | Alejandro Hurtado; Desarrollo Quadrantix | 32h | 32h |
| 53 | 2.2.1.3.7 | AP Batches |  | 2d | 2013-04-26 A | 2013-04-30 A | 45 | 100% |  |  | Alejandro Hurtado; Desarrollo Quadrantix | 32h | 32h |
| 54 | 2.2.1.3.8 | Cuentas Contables |  | 2d | 2013-04-26 A | 2013-04-30 A | 45 | 100% |  |  | Alejandro Hurtado; Desarrollo Quadrantix | 32h | 32h |
| 55 | 2.2.1.3.9 | TAX Codes |  | 2d | 2013-04-26 A | 2013-04-30 A | 45 | 100% |  |  | Alejandro Hurtado; Desarrollo Quadrantix | 32h | 32h |
| 56 | 2.2.1.3.10 | Ajuste catálogos |  | 5d | 2013-04-30 A | 2013-05-07 A | 55 | 100% |  |  | Alejandro Hurtado; Desarrollo Quadrantix | 80h | 80h |
| 57 | 2.2.1.3.11 | Confirmación de catálogos disponibles | milestone | 0d | 2013-05-07 A | 2013-05-07 A | 56 | 100% |  |  | Alejandro Hurtado |  |  |

| ID | WBS | Task | Type | Duration | Start | Finish | Predecessors | Complete | Resources | Work | Actual work |
| --- | --- | --- | --- | --- | --- | --- | --- | --- | --- | --- | --- |
| 58 | 2.2.1.4 | **Definición de interfaces/Servicios ERP-FACEL OC + Máximo** |  | 4d | 2013-05-07 A | 2013-05-13 A |  | 100% |  | 80h | 80h |
| 59 | 2.2.1.4.1 | Revisión de servicios (info puntual, FACEL, APIS/Open Interface) |  | 3d | 2013-05-07 A | 2013-05-10 A | 57 | 100% | Carlos Malagón; Eduardo Soriano; Gabriel Kinovisques | 72h | 72h |
| 60 | 2.2.1.4.2 | Confirmación cuenta de correo |  | 1d | 2013-05-10 A | 2013-05-13 A | 59 | 100% | Alejandro Hurtado | 8h | 8h |
| 61 | 2.2.1.4.3 | Documento de servicios/ Interfaces para OC/Máximo confirmado | milestone | 0d | 2013-05-10 A | 2013-05-10 A | 59 | 100% | Gabriel Kinovisques; Arq y Estándares; Carlos Malagón |  |  |
| 62 | 2.2.1.5 | **Estimación interfaces/Servicios ERP (BPEL)** |  | 37d | 2013-05-10 A | 2013-07-02 A |  | 100% |  | 728h | 728h |
| 63 | 2.2.1.5.1 | Integración DST |  | 3d | 2013-05-10 A | 2013-05-15 A | 61 | 100% | Gabriel Kinovisques | 24h | 24h |
| 64 | 2.2.1.5.2 | Solicitud de cotización |  | 1w | 2013-05-15 A | 2013-05-22 A | 63 | 100% | Carlos Malagón | 40h | 40h |
| 65 | 2.2.1.5.3 | Recepción/revisión de cotización |  | 3w | 2013-05-22 A | 2013-06-12 A | 64 | 100% | Carlos Malagón; Daniel Banda; Alejandro Landero; Eduardo Soriano | 480h | 480h |
| 66 | 2.2.1.5.4 | Confirmación Plan de trabajo | milestone | 0d | 2013-06-12 A | 2013-06-12 A | 65 | 100% | Carlos Malagón; Desarrollos DS |  |  |
| 67 | 2.2.1.5.5 | Recepción de plan de trabajo Desarrollo - Servicios OC |  | 3d | 2013-06-12 A | 2013-06-17 A | 66 | 100% | Carlos Malagón | 24h | 24h |
| 68 | 2.2.1.5.6 | Revisíon operación cotización y plan |  | 3d | 2013-06-17 A | 2013-06-20 A | 67 | 100% | Alejandro Landero; Carlos Malagón; Daniel Banda; Eduardo Soriano | 96h | 96h |
| 69 | 2.2.1.5.7 | Autorización Desarrollo Gates |  | 8d | 2013-06-20 A | 2013-07-02 A | 68 | 100% | Carlos Malagón | 64h | 64h |
| 70 | 2.2.1.5.8 | VoBo arranque desarrollo | milestone | 0d | 2013-07-02 A | 2013-07-02 A | 69 | 100% | Desarrollos DS |  |  |
| 71 | 2.2.1.6 | **Interface Máximo** |  | 37d | 2013-05-10 A | 2013-07-02 A |  | 100% |  | 728h | 728h |
| 72 | 2.2.1.6.1 | Integración DST |  | 3d | 2013-05-10 A | 2013-05-15 A | 61 | 100% | Gabriel Kinovisques | 24h | 24h |
| 73 | 2.2.1.6.2 | Solicitud de cotización |  | 1w | 2013-05-15 A | 2013-05-22 A | 72 | 100% | Carlos Malagón | 40h | 40h |
| 74 | 2.2.1.6.3 | Recepción/revisión de cotización |  | 3w | 2013-05-22 A | 2013-06-12 A | 73 | 100% | Carlos Malagón; Daniel Banda; Alejandro Landero; Eduardo Soriano | 480h | 480h |
| 75 | 2.2.1.6.4 | Confirmación Plan de trabajo | milestone | 0d | 2013-06-12 A | 2013-06-12 A | 74 | 100% | Carlos Malagón; Desarrollos DS |  |  |
| 76 | 2.2.1.6.5 | Recepción de plan de trabajo Interface MAXIMO |  | 5d | 2013-06-12 A | 2013-06-19 A | 74 | 100% | Carlos Malagón | 40h | 40h |
| 77 | 2.2.1.6.6 | Revisíon operación cotización y plan |  | 3d | 2013-06-19 A | 2013-06-24 A | 76 | 100% | Alejandro Landero; Carlos Malagón; Daniel Banda; Eduardo Soriano | 96h | 96h |
| 78 | 2.2.1.6.7 | Autorización Desarrollo Gates |  | 6d | 2013-06-24 A | 2013-07-02 A | 77 | 100% | Carlos Malagón | 48h | 48h |
| 79 | 2.2.1.6.8 | VoBo arranque interface Máximo | milestone | 0d | 2013-07-02 A | 2013-07-02 A | 78 | 100% | Desarrollos DS |  |  |
| 80 | 2.2.1.7 | **Ajuste Oracle-Pantalla AP** |  | 37d | 2013-05-10 A | 2013-07-02 A |  | 100% |  | 728h | 728h |
| 81 | 2.2.1.7.1 | Integración DST |  | 3d | 2013-05-10 A | 2013-05-15 A | 61 | 100% | Gabriel Kinovisques | 24h | 24h |
| 82 | 2.2.1.7.2 | Solicitud de cotización |  | 1w | 2013-05-15 A | 2013-05-22 A | 81 | 100% | Carlos Malagón | 40h | 40h |
| 83 | 2.2.1.7.3 | Recepción/revisión de cotización |  | 3w | 2013-05-22 A | 2013-06-12 A | 82 | 100% | Carlos Malagón; Daniel Banda; Alejandro Landero; Eduardo Soriano | 480h | 480h |
| 84 | 2.2.1.7.4 | Confirmación Plan de trabajo | milestone | 0d | 2013-06-12 A | 2013-06-12 A | 83 | 100% | Carlos Malagón; Desarrollos DS |  |  |
| 85 | 2.2.1.7.5 | Recepción plan de ajuste pantalla Oracle |  | 5d | 2013-06-12 A | 2013-06-19 A | 84 | 100% | Carlos Malagón | 40h | 40h |
| 86 | 2.2.1.7.6 | Revisíon operación cotización y plan |  | 3d | 2013-06-19 A | 2013-06-24 A | 85 | 100% | Alejandro Landero; Carlos Malagón; Daniel Banda; Eduardo Soriano | 96h | 96h |
| 87 | 2.2.1.7.7 | Autorización ajuste Gates |  | 6d | 2013-06-24 A | 2013-07-02 A | 86 | 100% | Carlos Malagón | 48h | 48h |
| 88 | 2.2.1.7.8 | VoBo arranque desarrollo | milestone | 0d | 2013-07-02 A | 2013-07-02 A | 87 | 100% | Desarrollos DS |  |  |

| ID | WBS | Task | Type | Duration | Start | Finish | Predecessors | Complete | Remaining | Total slack | Free slack | Constraint | Resources | Work | Actual work |
| --- | --- | --- | --- | --- | --- | --- | --- | --- | --- | --- | --- | --- | --- | --- | --- |
| 89 | 2.2.1.8 | **Mecanismos de Seguridad definidos** |  | 2d | 2013-05-10 A | 2013-05-14 A |  | 100% |  |  |  |  |  | 96h | 96h |
| 90 | 2.2.1.8.1 | Directorio activo |  | 2d | 2013-05-10 A | 2013-05-14 A | 61 | 100% |  |  |  |  | Alejandro Hurtado; Carlos Malagón; Eduardo Soriano | 48h | 48h |
| 91 | 2.2.1.8.2 | Cifrado y certificación |  | 2d | 2013-05-10 A | 2013-05-14 A | 61 | 100% |  |  |  |  | Alejandro Hurtado; Carlos Malagón; Eduardo Soriano | 48h | 48h |
| 92 | 2.2.2 | **Desarrollo** |  | 80.5d | 2013-05-13 A | 2013-09-02 |  | 78% | 17.98d | 2d | 0d |  |  | 1160h | 1160h |
| 93 | 2.2.2.1 | Migración de pantallas FACEL EBS a FACEL OPEN |  | 38d | 2013-05-14 A | 2013-07-05 A | 90, 91, 37 | 100% |  |  |  |  | Desarrollo Quadrantix | 304h | 304h |
| 94 | 2.2.2.2 | Obtener datos de prueba para pantallas |  | 5d | 2013-07-03 A | 2013-07-10 A | 93FS-2d | 100% |  |  |  |  |  |  |  |
| 95 | 2.2.2.3 | Pruebas con datos y finalización de pantallas |  | 3d | 2013-07-10 A | 2013-07-15 A | 94 | 100% |  |  |  |  |  |  |  |
| 96 | 2.2.2.4 | Implementación adecuaciones Reglas Negocio |  | 29d | 2013-05-27 A | 2013-07-05 A | 93FF | 100% |  |  |  |  | Desarrollo Quadrantix | 232h | 232h |
| 97 | 2.2.2.5 | Pruebas con reglas y finalización de Reglas |  | 3d | 2013-07-15 A | 2013-07-18 A | 95 | 100% |  |  |  |  |  |  |  |
| 98 | 2.2.2.6 | Desarrollo NC |  | 9d | 2013-07-15 A | 2013-07-25 A |  | 100% |  |  |  | start no earlier than 2013-07-15 |  |  |  |
| 99 | 2.2.2.7 | Implementación adecuaciones reglas de negocio a NC |  | 5d | 2013-07-26 A | 2013-08-01 A | 98 | 100% |  |  |  |  |  |  |  |
| 100 | 2.2.2.8 | Cambio en estructura de plantas |  | 2d | 2013-08-02 A | 2013-08-05 A | 99 | 100% |  |  |  |  |  |  |  |
| 101 | 2.2.2.9 | Ajustes (CFE & revisión Operación) |  | 7d | 2013-08-06 A | 2013-08-14 A | 100 | 100% |  |  |  |  |  |  |  |
| 102 | 2.2.2.10 | Adecuaciones revisión con usuarios |  | 5d | 2013-08-08 A | 2013-08-14 A |  | 100% |  |  |  |  |  |  |  |
| 103 | 2.2.2.11 | Fin desarrollo QDX Pantallas OC/M/NC | milestone | 0d | 2013-08-14 A | 2013-08-14 A | 102 | 100% |  |  |  |  |  |  |  |
| 104 | 2.2.2.12 | **Desarrollo de servicios** |  | 34.5d | 2013-07-16 A | 2013-09-02 |  | 48% | 18.03d | 2d |  |  |  | 96h | 96h |
| 105 | 2.2.2.12.1 | Prerequisitos |  | 3d | 2013-07-16 A | 2013-07-19 A | 70FS+2w | 100% |  |  |  |  | CAP; HP | 48h | 48h |
| 106 | 2.2.2.12.2 | **Análisis y Diseño** |  | 3d | 2013-07-19 A | 2013-07-24 A | 105 | 100% |  |  |  |  | CAP; HP | 48h | 48h |
| 107 | 2.2.2.12.2.1 | Análisis |  | 24h | 2013-07-19 A | 2013-07-24 A |  | 100% |  |  |  |  |  |  |  |
| 108 | 2.2.2.12.2.2 | **Diseño** |  | 3d | 2013-07-19 A | 2013-07-24 A |  | 100% |  |  |  |  |  |  |  |
| 109 | 2.2.2.12.2.2.1 | Diseño |  | 10h | 2013-07-19 A | 2013-07-22 A |  | 100% |  |  |  |  |  |  |  |
| 110 | 2.2.2.12.2.2.2 | Documentación |  | 10h | 2013-07-22 A | 2013-07-23 A | 109 | 100% |  |  |  |  |  |  |  |
| 111 | 2.2.2.12.2.2.3 | Validación Diseño |  | 4h | 2013-07-24 A | 2013-07-24 A | 110 | 100% |  |  |  |  |  |  |  |
| 112 | 2.2.2.12.3 | **Programación** |  | 28.5d | 2013-07-24 A | 2013-09-02 |  | 43% | 16.31d | 2d |  |  |  |  |  |
| 113 | 2.2.2.12.3.1 | **1 Recuperación de PreFacturas EBS** |  | 10.38d | 2013-07-24 A | 2013-08-07 |  | 71% | 3d | 20.12d |  |  |  |  |  |
| 114 | 2.2.2.12.3.1.1 | Programación/Pruebas Unitarias / Entrega |  | 59h | 2013-07-24 A | 2013-08-02 A | 111 | 100% |  |  |  |  |  |  |  |
| 115 | 2.2.2.12.3.1.2 | Entrega para certificación | milestone | 0d | 2013-08-02 A | 2013-08-02 A | 114 | 100% |  |  |  |  |  |  |  |
| 116 | 2.2.2.12.3.1.3 | Pruebas ambiente 300 |  | 24h | 2013-08-02 | 2013-08-07 | 115 |  |  | 20.12d | 0d |  |  |  |  |
| 117 | 2.2.2.12.3.1.4 | VoBo 300 - 1 | milestone | 0d | 2013-08-07 | 2013-08-07 | 116 |  |  | 20.12d |  |  | Daniel Banda; Eduardo Soriano |  |  |

| ID | WBS | Task | Type | Duration | Start | Finish | Predecessors | Complete | Remaining | Total slack | Free slack | Resources |
| --- | --- | --- | --- | --- | --- | --- | --- | --- | --- | --- | --- | --- |
| 118 | 2.2.2.12.3.2 | **2 Recuperación de Facturas Máximo** |  | 10.62d | 2013-07-24 A | 2013-08-08 |  | 65% | 3.76d | 19.88d |  |  |
| 119 | 2.2.2.12.3.2.1 | Programación/Pruebas Unitarias / Entrega |  | 61h | 2013-07-24 A | 2013-08-05 | 111 | 90% | 6.1h | 6.1d | 0d |  |
| 120 | 2.2.2.12.3.2.2 | Entrega para certificación | milestone | 0d | 2013-08-05 | 2013-08-05 | 119 |  |  | 19.88d | 0d |  |
| 121 | 2.2.2.12.3.2.3 | Pruebas ambiente 300 |  | 24h | 2013-08-05 | 2013-08-08 | 120 |  |  | 19.88d | 0d |  |
| 122 | 2.2.2.12.3.2.4 | VoBo 300 - 2 | milestone | 0d | 2013-08-08 | 2013-08-08 | 121 |  |  | 19.88d |  | Daniel Banda; Eduardo Soriano |
| 123 | 2.2.2.12.3.3 | **3 Asociación de Pre-fact y recibo (EBS).** |  | 12d | 2013-08-02 A | 2013-08-20 |  | 65% | 4.15d | 11.12d |  |  |
| 124 | 2.2.2.12.3.3.1 | Pruebas / Programación |  | 24h | 2013-08-02 A | 2013-08-07 | 114 | 52% | 11.52h | 10.09d | 0d |  |
| 125 | 2.2.2.12.3.3.2 | Programación/Pruebas Unitarias / Entrega |  | 56h | 2013-08-07 A | 2013-08-16 | 124 | 80% | 11.2h | 4.49d | 0d |  |
| 126 | 2.2.2.12.3.3.3 | Entrega para certificación | milestone | 0d | 2013-08-16 | 2013-08-16 | 125 |  |  | 11.12d | 0d |  |
| 127 | 2.2.2.12.3.3.4 | Pruebas ambiente 300 |  | 16h | 2013-08-16 | 2013-08-20 | 126 |  |  | 11.12d |  |  |
| 128 | 2.2.2.12.3.3.5 | VoBo 300 - 3 | milestone | 0d | 2013-08-20 | 2013-08-20 | 129 |  |  | 11.12d |  |  |
| 129 | 2.2.2.12.3.3.6 | Desarrollo para la invocación al servicio |  | 2d | 2013-08-16 A | 2013-08-20 A | 125 | 100% |  |  |  |  |
| 130 | 2.2.2.12.3.4 | **4 Asociación de Pre-fact Máximo** |  | 12d | 2013-08-02 A | 2013-08-20 |  | 65% | 4.15d | 11.12d |  |  |
| 131 | 2.2.2.12.3.4.1 | Pruebas / Programación |  | 24h | 2013-08-02 A | 2013-08-07 | 114 | 52% | 11.52h | 7.85d | 0d |  |
| 132 | 2.2.2.12.3.4.2 | Programación/Pruebas Unitarias / Entrega |  | 56h | 2013-08-07 A | 2013-08-16 | 131 | 80% | 11.2h | 2.25d | 0d |  |
| 133 | 2.2.2.12.3.4.3 | Entrega para certificación | milestone | 0d | 2013-08-16 | 2013-08-16 | 132 |  |  | 11.12d | 0d |  |
| 134 | 2.2.2.12.3.4.4 | Pruebas ambiente 300 |  | 16h | 2013-08-16 | 2013-08-20 | 133 |  |  | 11.12d |  |  |
| 135 | 2.2.2.12.3.4.5 | Desarrollo para la invocación al servicio |  | 2d | 2013-08-16 A | 2013-08-20 A | 132 | 100% |  |  |  |  |
| 136 | 2.2.2.12.3.4.6 | VoBo 300 - 4 | milestone | 0d | 2013-08-20 | 2013-08-20 | 135 |  |  | 11.12d |  | Daniel Banda; Eduardo Soriano |
| 137 | 2.2.2.12.3.5 | **5 Envío de Nota Debito (ND) a FACEL (EBS)** |  | 11.62d | 2013-08-05 A | 2013-08-20 |  | 17% | 9.64d | 11.25d |  |  |
| 138 | 2.2.2.12.3.5.1 | Pruebas programación |  | 24h | 2013-08-05 | 2013-08-08 | 119 |  |  | 6.1d | 0d |  |
| 139 | 2.2.2.12.3.5.2 | Programación/Pruebas Unitarias / Entrega |  | 53h | 2013-08-08 A | 2013-08-16 | 138 | 30% | 37.1h | 4.11d | 0d |  |
| 140 | 2.2.2.12.3.5.3 | Entrega para certificación | milestone | 0d | 2013-08-16 | 2013-08-16 | 139 |  |  | 11.25d | 0d |  |
| 141 | 2.2.2.12.3.5.4 | Pruebas ambiente 300 |  | 16h | 2013-08-16 | 2013-08-20 | 140 |  |  | 11.25d | 0d |  |
| 142 | 2.2.2.12.3.5.5 | VoBo 300 | milestone | 0d | 2013-08-20 | 2013-08-20 | 141 |  |  | 11.25d |  | Daniel Banda; Eduardo Soriano |

| ID | WBS | Task | Type | Duration | Start | Finish | Predecessors | Complete | Remaining | Total slack | Free slack | Resources | Work | Actual work |
| --- | --- | --- | --- | --- | --- | --- | --- | --- | --- | --- | --- | --- | --- | --- |
| 143 | 2.2.2.12.3.6 | **6 Envío de Nota Debito de FACEL al EBS** |  | 10.62d | 2013-08-16 A | 2013-09-02 |  | 32% | 7.27d | 2.5d |  |  |  |  |
| 144 | 2.2.2.12.3.6.1 | Pruebas programación |  | 16h | 2013-08-16 | 2013-08-20 | 125 |  |  | 4.49d | 0d |  |  |  |
| 145 | 2.2.2.12.3.6.2 | Programación/Pruebas Unitarias / Entrega |  | 53h | 2013-08-20 A | 2013-08-29 | 144 | 30% | 37.1h | 2.5d | 0d |  |  |  |
| 146 | 2.2.2.12.3.6.3 | Entrega para certificación | milestone | 0d | 2013-08-29 | 2013-08-29 | 145 |  |  | 2.5d | 0d |  |  |  |
| 147 | 2.2.2.12.3.6.4 | Pruebas ambiente 300 |  | 16h | 2013-08-29 | 2013-09-02 | 146 |  |  | 2.5d |  |  |  |  |
| 148 | 2.2.2.12.3.6.5 | Desarrollo para la invocación al servicio |  | 2d | 2013-08-29 A | 2013-09-02 A | 145 | 100% |  |  |  |  |  |  |
| 149 | 2.2.2.12.3.6.6 | VoBo 300 | milestone | 0d | 2013-09-02 | 2013-09-02 | 148 |  |  | 2d | 0d | Daniel Banda; Eduardo Soriano |  |  |
| 150 | 2.2.2.12.3.7 | **(8) Registro de facturas en Oracle EBS NC** |  | 10.62d | 2013-08-16 A | 2013-09-02 |  | 19% | 8.64d | 2.12d |  |  |  |  |
| 151 | 2.2.2.12.3.7.1 | Pruebas programación |  | 16h | 2013-08-16 | 2013-08-20 | 139 |  |  | 4.11d | 0d |  |  |  |
| 152 | 2.2.2.12.3.7.2 | Programación/Pruebas Unitarias / Entrega |  | 53h | 2013-08-20 A | 2013-08-29 | 151 | 30% | 37.1h | 2.12d | 0d |  |  |  |
| 153 | 2.2.2.12.3.7.3 | Entrega para certificación | milestone | 0d | 2013-08-29 | 2013-08-29 | 152 |  |  | 2.12d | 0d |  |  |  |
| 154 | 2.2.2.12.3.7.4 | Pruebas ambiente 300 |  | 16h | 2013-08-29 | 2013-09-02 | 153 |  |  | 2.12d | 0d |  |  |  |
| 155 | 2.2.2.12.3.7.5 | VoBo 300 | milestone | 0d | 2013-09-02 | 2013-09-02 | 154, 99 |  |  | 2.12d | 0.12d | Daniel Banda; Eduardo Soriano |  |  |
| 156 | 2.2.2.12.3.8 | **7 Alta de proveedores** |  | 11.12d | 2013-08-16 | 2013-09-02 |  |  |  | 2d |  |  |  |  |
| 157 | 2.2.2.12.3.8.1 | Pruebas programación |  | 16h | 2013-08-16 | 2013-08-20 | 132 |  |  | 2.25d | 0d |  |  |  |
| 158 | 2.2.2.12.3.8.2 | Programación/Pruebas Unitarias / Entrega |  | 51h | 2013-08-20 | 2013-08-29 | 157 |  |  | 2.25d | 0d |  |  |  |
| 159 | 2.2.2.12.3.8.3 | Entrega para certificación | milestone | 0d | 2013-08-29 | 2013-08-29 | 158 |  |  | 2.25d | 0d |  |  |  |
| 160 | 2.2.2.12.3.8.4 | Pruebas ambiente 300 |  | 16h | 2013-08-29 | 2013-09-02 | 159 |  |  | 2.25d | 0d |  |  |  |
| 161 | 2.2.2.12.3.8.5 | VoBo 300 | milestone | 0d | 2013-09-02 | 2013-09-02 | 160 |  |  | 2.25d | 0.25d | Daniel Banda; Eduardo Soriano |  |  |
| 162 | 2.2.2.12.3.8.6 | Transferencia tecnológica |  | 4h | 2013-09-02 | 2013-09-02 | 161, 155, 149 |  |  | 2d | 0d |  |  |  |
| 163 | 2.2.2.12.3.8.7 | Cierre tareas HP | milestone | 0d | 2013-09-02 | 2013-09-02 | 162 |  |  | 2d |  |  |  |  |
| 164 | 2.2.2.13 | **Cuentas de correo para recepción de XML** |  | 7d | 2013-05-13 A | 2013-05-22 A | 60 | 100% |  |  |  |  | 112h | 112h |
| 165 | 2.2.2.13.1 | Solicitud de cuentas de correo |  | 2d | 2013-05-13 A | 2013-05-15 A |  | 100% |  |  |  | Carlos Malagón; Eduardo Soriano | 32h | 32h |
| 166 | 2.2.2.13.2 | Configuración |  | 5d | 2013-05-15 A | 2013-05-22 A | 165 | 100% |  |  |  | Desarrollo Quadrantix; Alejandro Hurtado | 80h | 80h |
| 167 | 2.2.2.13.3 | Cuentas de correo configuradas | milestone | 0d | 2013-05-22 A | 2013-05-22 A | 166 | 100% |  |  |  | Alejandro Hurtado |  |  |

| ID | WBS | Task | Type | Duration | Start | Finish | Predecessors | Complete | Remaining | Total slack | Free slack | Resources | Work | Actual work |
| --- | --- | --- | --- | --- | --- | --- | --- | --- | --- | --- | --- | --- | --- | --- |
| 168 | 2.2.2.14 | **Ajuste Oracle-Pantalla AP** |  | 26d | 2013-07-02 A | 2013-08-07 A |  | 100% |  |  |  |  | 416h | 416h |
| 169 | 2.2.2.14.1 | Prerequisitos |  | 3d | 2013-07-02 A | 2013-07-05 A | 88 | 100% |  |  |  | CAP; HP | 48h | 48h |
| 170 | 2.2.2.14.2 | Desarrollo |  | 15d | 2013-07-05 A | 2013-07-26 A | 169 | 100% |  |  |  | CAP; HP | 240h | 240h |
| 171 | 2.2.2.14.3 | VoBo Desarrollo | milestone | 0d | 2013-07-26 A | 2013-07-26 A | 170 | 100% |  |  |  | CAP; HP |  |  |
| 172 | 2.2.2.14.4 | Instalación 300 |  | 3d | 2013-07-26 A | 2013-07-31 A | 171 | 100% |  |  |  | CAP; HP | 48h | 48h |
| 173 | 2.2.2.14.5 | Certificación |  | 2d | 2013-07-31 A | 2013-08-02 A | 172 | 100% |  |  |  | Daniel Banda; Eduardo Soriano | 32h | 32h |
| 174 | 2.2.2.14.6 | VoBo 300 | milestone | 0d | 2013-08-02 A | 2013-08-02 A | 173 | 100% |  |  |  | Daniel Banda; Eduardo Soriano |  |  |
| 175 | 2.2.2.14.7 | Ventana instalación 500 |  | 3d | 2013-08-02 A | 2013-08-07 A | 174 | 100% |  |  |  | CAP; HP | 48h | 48h |
| 176 | 2.2.2.15 | Ajuste Pantalla AP (Oracle) completado | milestone | 0d | 2013-08-07 A | 2013-08-07 A | 175 | 100% |  |  |  |  |  |  |
| 177 | 2.2.3 | **Comunicado a proveedores** |  | 26d | 2013-07-16 A | 2013-08-21 A |  | 100% |  |  |  |  |  |  |
| 178 | 2.2.3.1 | Generar el comunicado a proveedores |  | 4w | 2013-07-16 A | 2013-08-13 A | 88FS+2w | 100% |  |  |  |  |  |  |
| 179 | 2.2.3.2 | Revisión y confirmación |  | 1w | 2013-08-13 A | 2013-08-20 A | 178 | 100% |  |  |  |  |  |  |
| 180 | 2.2.3.3 | VoBo comunicado a proveedores | milestone | 0d | 2013-08-20 A | 2013-08-20 A | 179 | 100% |  |  |  |  |  |  |
| 181 | 2.2.3.4 | Envío de comunicado |  | 1d | 2013-08-20 A | 2013-08-21 A | 180 | 100% |  |  |  |  |  |  |
| 182 | 2.2.3.5 | Comunicado a proveedores enviado | milestone | 0d | 2013-08-21 A | 2013-08-21 A | 181 | 100% |  |  |  |  |  |  |
| 183 | 2.2.4 | **Pruebas OC/Máximo/NC** |  | 13d | 2013-09-02 A | 2013-09-19 |  | 89% | 1.41d | 67.62d |  |  | 1040h | 880h |
| 184 | 2.2.4.1 | Pruebas de Interface con AP/Máximo |  | 3d | 2013-09-02 A | 2013-09-05 A | 268, 133, 126, 261, 155 | 100% |  |  |  | Alejandro Landero; Daniel Banda; Carlos Malagón; Eduardo Soriano; Guadalupe Aragón; Gabriel Kinovisques; Isaac Aguado; Jesús Mejía; Mónica León; Ricardo Díaz | 240h | 240h |
| 185 | 2.2.4.2 | Pruebas de proceso Automatizado |  | 3d | 2013-09-05 A | 2013-09-10 A | 184 | 100% |  |  |  | Alejandro Landero; Daniel Banda; Carlos Malagón; Eduardo Soriano; Guadalupe Aragón; Gabriel Kinovisques; Isaac Aguado; Jesús Mejía; Mónica León; Ricardo Díaz | 240h | 240h |
| 186 | 2.2.4.3 | Ajustes de observaciones durante las pruebas |  | 2d | 2013-09-10 A | 2013-09-12 A | 185 | 100% |  |  |  | Alejandro Landero; Daniel Banda; Carlos Malagón; Eduardo Soriano; Guadalupe Aragón; Gabriel Kinovisques; Isaac Aguado; Jesús Mejía; Mónica León; Ricardo Díaz | 160h | 160h |
| 187 | 2.2.4.4 | Prueba recepción correos y validación |  | 3d | 2013-09-12 A | 2013-09-17 A | 186, 167 | 100% |  |  |  | Alejandro Landero; Daniel Banda; Carlos Malagón; Eduardo Soriano; Guadalupe Aragón; Gabriel Kinovisques; Isaac Aguado; Jesús Mejía; Mónica León; Ricardo Díaz | 240h | 240h |
| 188 | 2.2.4.5 | Prueba UAT |  | 2d | 2013-09-17 | 2013-09-19 | 187 |  |  | 35.62d | 0d | Alejandro Landero; Daniel Banda; Carlos Malagón; Eduardo Soriano; Guadalupe Aragón; Gabriel Kinovisques; Isaac Aguado; Jesús Mejía; Mónica León; Ricardo Díaz | 160h |  |
| 189 | 2.2.4.6 | VoBo pruebas | milestone | 0d | 2013-09-19 | 2013-09-19 | 188 |  |  | 35.62d | 0d |  |  |  |
| 190 | 2.2.4.7 | Ajustes servicios / configuración |  | 10d | 2013-09-02 A | 2013-09-16 | 184SS | 95% | 0.5d | 70.62d |  |  |  |  |
| 191 | 2.2.5 | **Go Live OC/Máximo / NC** |  | 22d | 2013-09-19 | 2013-10-21 |  |  |  | 35.62d |  |  | 744h |  |
| 192 | 2.2.5.1 | Preparación del paquete de instalación |  | 2d | 2013-09-19 | 2013-09-23 | 189 |  |  | 35.62d | 0d | Ricardo Díaz; Desarrollo Quadrantix | 32h |  |
| 193 | 2.2.5.2 | Ajustes a la documentación |  | 2d | 2013-09-23 | 2013-09-25 | 192 |  |  | 35.62d | 0d | Ricardo Díaz; Rogelio Esquivel | 32h |  |
| 194 | 2.2.5.3 | Apoyo a Sistemas para el proceso de migración |  | 2d | 2013-09-25 | 2013-09-27 | 193 |  |  | 35.62d | 0d | Ricardo Díaz; Desarrollo Quadrantix; Rogelio Esquivel | 48h |  |
| 195 | 2.2.5.4 | Apoyo para pruebas en el ambiente de producción |  | 1d | 2013-09-27 | 2013-09-30 | 194 |  |  | 35.62d | 0d | Ricardo Díaz; Desarrollo Quadrantix; Rogelio Esquivel | 24h |  |
| 196 | 2.2.5.5 | Liberación 500 | milestone | 0d | 2013-09-30 | 2013-09-30 | 195, 182 |  |  | 35.62d | 0d | Ricardo Díaz |  |  |
| 197 | 2.2.5.6 | Confirmación proveedores y operación arranque OC |  | 1d | 2013-09-27 | 2013-09-30 | 194 |  |  | 35.62d | 0d | Alejandro Landero | 8h |  |
| 198 | 2.2.5.7 | Arranque bloque 1 proveedores para OC/Máximo |  | 5d | 2013-09-30 | 2013-10-07 | 196, 197 |  |  | 35.62d | 0d | Ricardo Díaz; Alejandro Landero; Carlos Malagón; Daniel Banda; Eduardo Soriano | 200h |  |
| 199 | 2.2.5.8 | Arranque bloque 2 proveedores para OC/Máximo |  | 5d | 2013-10-07 | 2013-10-14 | 198 |  |  | 35.62d | 0d | Ricardo Díaz; Alejandro Landero; Carlos Malagón; Daniel Banda; Eduardo Soriano | 200h |  |
| 200 | 2.2.5.9 | Arranque proveedores restantes para OC/Máximo |  | 5d | 2013-10-14 | 2013-10-21 | 199 |  |  | 35.62d | 0d | Ricardo Díaz; Alejandro Landero; Carlos Malagón; Daniel Banda; Eduardo Soriano | 200h |  |
| 201 | 2.2.5.10 | Operación 100% faturas OC+Máximo | milestone | 0d | 2013-10-21 | 2013-10-21 | 200 |  |  | 35.62d | 15.62d |  |  |  |

| ID | WBS | Task | Type | Duration | Start | Finish | Predecessors | Complete | Remaining | Total slack | Resources | Work | Actual work |
| --- | --- | --- | --- | --- | --- | --- | --- | --- | --- | --- | --- | --- | --- |
| 202 | 2.3 | **Facturas: Anticipos/Importación** |  | 154.5d | 2013-04-23 A | 2013-11-25 |  | 58% | 65.41d | 0d |  | 3936h | 1488h |
| 203 | 2.3.1 | **Análisis y Diseño** |  | 80d | 2013-04-23 A | 2013-08-13 A |  | 100% |  |  |  | 1456h | 1456h |
| 204 | 2.3.1.1 | Confirmación de modelo de operación |  | 5d | 2013-04-23 A | 2013-04-30 A | 40 | 100% |  |  | Alejandro Hurtado; Desarrollo Quadrantix; Daniel Banda; Carlos Malagón; Alejandro Landero; Eduardo Soriano; Gabriel Kinovisques; Guadalupe Aragón; Isaac Aguado; Jesús Mejía; Mónica León; Rogelio Esquivel | 480h | 480h |
| 205 | 2.3.1.2 | **Identificación de adecuaciones y personalizaciones** |  | 3d | 2013-04-30 A | 2013-05-03 A |  | 100% |  |  |  | 48h | 48h |
| 206 | 2.3.1.2.1 | Datos adicionales del Match |  | 0.5d | 2013-04-30 A | 2013-04-30 A | 204 | 100% |  |  | Alejandro Hurtado; Desarrollo Quadrantix | 8h | 8h |
| 207 | 2.3.1.2.2 | Anticipos |  | 0.5d | 2013-05-01 A | 2013-05-01 A | 206 | 100% |  |  | Alejandro Hurtado; Desarrollo Quadrantix | 8h | 8h |
| 208 | 2.3.1.2.3 | Funcionalidad de FACEL EBS para migrar a FACEL Open |  | 2d | 2013-05-01 A | 2013-05-03 A | 207 | 100% |  |  | Alejandro Hurtado; Desarrollo Quadrantix | 32h | 32h |
| 209 | 2.3.1.3 | **Revisión de los catálogos e información del ERP que interactua con FACEL Anticipos/Importación / NC** |  | 7d | 2013-05-03 A | 2013-05-14 A |  | 100% |  |  |  | 120h | 120h |
| 210 | 2.3.1.3.1 | Revisión de catálogos |  | 2d | 2013-05-03 A | 2013-05-07 A | 208 | 100% |  |  | Alejandro Hurtado; Desarrollo Quadrantix; Carlos Malagón; Eduardo Soriano; Arq y Estándares | 80h | 80h |
| 211 | 2.3.1.3.2 | Ajuste catálogos |  | 5d | 2013-05-07 A | 2013-05-14 A | 210 | 100% |  |  | Súper Usuarios GB | 40h | 40h |
| 212 | 2.3.1.3.3 | Catálogos disponibles | milestone | 0d | 2013-05-14 A | 2013-05-14 A | 211 | 100% |  |  | Carlos Malagón |  |  |
| 213 | 2.3.1.4 | **Definición interfaces/Servicios ERP-FACEL Anticipos/Importación/NC** |  | 65d | 2013-05-14 A | 2013-08-13 A |  | 100% |  |  |  | 80h | 80h |
| 214 | 2.3.1.4.1 | Revisión de servicios (info puntual, FACEL, APIS/Open Interface) |  | 5d | 2013-05-14 A | 2013-05-21 A | 212 | 100% |  |  | Alejandro Hurtado; Desarrollo Quadrantix | 80h | 80h |
| 215 | 2.3.1.4.2 | Documento de servicios/ Interfaces para Anticipos/Importación/NC | milestone | 0d | 2013-05-21 A | 2013-05-21 A | 214 | 100% |  |  | Alejandro Hurtado; Desarrollo Quadrantix |  |  |
| 216 | 2.3.1.4.3 | Confirmación ajuste catálogo y servicios par anticipos |  | 20d | 2013-07-16 A | 2013-08-13 A | 215FS+2mo | 100% |  |  |  |  |  |
| 217 | 2.3.1.5 | **Estimación de interfaces/Servicios ERP (BPEL) Anticipos/Importación/NC** |  | 36d | 2013-05-21 A | 2013-07-10 A |  | 100% |  |  |  | 728h | 728h |
| 218 | 2.3.1.5.1 | Integración DST |  | 3d | 2013-05-21 A | 2013-05-24 A | 215 | 100% |  |  | Gabriel Kinovisques | 24h | 24h |
| 219 | 2.3.1.5.2 | Solicitud de cotización |  | 1w | 2013-05-24 A | 2013-05-31 A | 218 | 100% |  |  | Carlos Malagón | 40h | 40h |
| 220 | 2.3.1.5.3 | Recepción/revisión de cotización |  | 3w | 2013-05-31 A | 2013-06-21 A | 219 | 100% |  |  | Carlos Malagón; Daniel Banda; Alejandro Landero; Eduardo Soriano | 480h | 480h |
| 221 | 2.3.1.5.4 | Confirmación Plan de trabajo | milestone | 0d | 2013-06-21 A | 2013-06-21 A | 220 | 100% |  |  | Carlos Malagón; Desarrollos DS |  |  |
| 222 | 2.3.1.5.5 | Revisíon operación cotización y plan |  | 3d | 2013-06-21 A | 2013-06-26 A | 221 | 100% |  |  | Alejandro Landero; Carlos Malagón; Daniel Banda; Eduardo Soriano | 96h | 96h |
| 223 | 2.3.1.5.6 | Revisión y autorización presupuesto Gates |  | 1d | 2013-06-26 A | 2013-06-27 A | 222 | 100% |  |  | Carlos Malagón | 8h | 8h |
| 224 | 2.3.1.5.7 | Recepción plan de trabajo Desarrollo - Servicios Anticipos/Importación/NC |  | 10d | 2013-06-26 A | 2013-07-10 A | 222 | 100% |  |  | Carlos Malagón | 80h | 80h |
| 225 | 2.3.1.5.8 | VoBo arranque desarrollo | milestone | 0d | 2013-07-10 A | 2013-07-10 A | 224 | 100% |  |  | Carlos Malagón |  |  |

Notes:
- 202: La fucionalidad de anticipos y factura estandar desaparecio desde Julio a petición del cliente. / Ya que lo asociarían directo en AP

| ID | WBS | Task | Type | Duration | Start | Finish | Predecessors | Complete | Remaining | Total slack | Free slack | Constraint | Resources | Work | Actual work |
| --- | --- | --- | --- | --- | --- | --- | --- | --- | --- | --- | --- | --- | --- | --- | --- |
| 226 | 2.3.2 | **Desarrollo** |  | 20d | 2013-09-03 A | 2013-09-30 |  | 10% | 18d | 0d |  |  |  | 320h | 32h |
| 227 | 2.3.2.1 | Migración de pantallas FACEL EBS a FACEL OPEN |  | 10d | 2013-09-03 A | 2013-09-16 | 92, 216 | 20% | 8d | 0d |  | start no earlier than 2013-03-25 | Ricardo Díaz; Desarrollo Quadrantix | 160h | 32h |
| 228 | 2.3.2.2 | Implementación adecuaciones Reglas Negocio |  | 10d | 2013-09-17 | 2013-09-30 | 227 |  |  | 0d |  | start no earlier than 2013-03-25 | Ricardo Díaz; Desarrollo Quadrantix | 160h |  |
| 229 | 2.3.2.3 | Ajustes vistas QDX Anticipos/importaciones completados | milestone | 0d | 2013-09-30 | 2013-09-30 | 228 |  |  | 0d |  |  |  |  |  |
| 230 | 2.3.3 | **Pruebas Anticipos/Importación** |  | 18d | 2013-10-01 | 2013-10-24 |  |  |  | 0d |  |  |  | 1440h |  |
| 231 | 2.3.3.1 | Pruebas de Interface con Anticipos/Importaciones/NC |  | 5d | 2013-10-01 | 2013-10-07 | 136, 155, 229 |  |  | 0d |  |  | Ricardo Díaz; Desarrollo Quadrantix; Carlos Malagón; Eduardo Soriano; Gabriel Kinovisques; Guadalupe Aragón; Isaac Aguado; Jesús Mejía; Mónica León; Rogelio Esquivel | 400h |  |
| 232 | 2.3.3.2 | Pruebas de proceso Automatizado |  | 5d | 2013-10-08 | 2013-10-14 | 231 |  |  | 0d |  |  | Ricardo Díaz; Desarrollo Quadrantix; Carlos Malagón; Eduardo Soriano; Gabriel Kinovisques; Guadalupe Aragón; Isaac Aguado; Jesús Mejía; Mónica León; Rogelio Esquivel | 400h |  |
| 233 | 2.3.3.3 | Ajustes de observaciones durante las pruebas |  | 3d | 2013-10-15 | 2013-10-17 | 232 |  |  | 0d |  |  | Ricardo Díaz; Desarrollo Quadrantix; Carlos Malagón; Eduardo Soriano; Gabriel Kinovisques; Guadalupe Aragón; Isaac Aguado; Jesús Mejía; Mónica León; Rogelio Esquivel | 240h |  |
| 234 | 2.3.3.4 | Prueba UAT |  | 5d | 2013-10-18 | 2013-10-24 | 233 |  |  | 0d |  |  | Alejandro Landero; Daniel Banda; Eduardo Soriano; Francisco Monroy; Gabriel Kinovisques; Guadalupe Aragón; Isaac Aguado; Jesús Mejía; Mónica León; Súper Usuarios GB | 400h |  |
| 235 | 2.3.3.5 | VoBo pruebas | milestone | 0d | 2013-10-24 | 2013-10-24 | 234 |  |  | 0d |  |  | Alejandro Landero |  |  |
| 236 | 2.3.4 | **Go Live Anticipos/Importaciones** |  | 22d | 2013-10-25 | 2013-11-25 |  |  |  | 0d |  |  |  | 720h |  |
| 237 | 2.3.4.1 | Preparación del paquete de instalación |  | 2d | 2013-10-25 | 2013-10-28 | 235 |  |  | 0d |  |  | Ricardo Díaz; Desarrollo Quadrantix | 32h |  |
| 238 | 2.3.4.2 | Ajustes a la documentación |  | 2d | 2013-10-29 | 2013-10-30 | 237 |  |  | 0d |  |  | Ricardo Díaz; Rogelio Esquivel | 32h |  |
| 239 | 2.3.4.3 | Apoyo a Sistemas para el proceso de migración |  | 1d | 2013-10-31 | 2013-10-31 | 238 |  |  | 0d |  |  | Ricardo Díaz; Desarrollo Quadrantix; Rogelio Esquivel | 24h |  |
| 240 | 2.3.4.4 | Apoyo para pruebas en el ambiente de producción |  | 1d | 2013-11-01 | 2013-11-01 | 239, 264, 268 |  |  | 0d |  |  | Ricardo Díaz; Desarrollo Quadrantix; Rogelio Esquivel | 24h |  |
| 241 | 2.3.4.5 | Liberación | milestone | 0d | 2013-11-01 | 2013-11-01 | 240 |  |  | 0d |  |  | Ricardo Díaz |  |  |
| 242 | 2.3.4.6 | Confirmación proveedores y operación arranque resguardo |  | 1d | 2013-11-04 | 2013-11-04 | 241 |  |  | 0d |  |  | Alejandro Landero | 8h |  |
| 243 | 2.3.4.7 | Arranque bloque 1 proveedores para Anticipos/Importaciones/NC |  | 5d | 2013-11-05 | 2013-11-11 | 242 |  |  | 0d |  |  | Ricardo Díaz; Alejandro Landero; Carlos Malagón; Daniel Banda; Eduardo Soriano | 200h |  |
| 244 | 2.3.4.8 | Arranque bloque 2 proveedores para Anticipos/Importaciones/NC |  | 5d | 2013-11-12 | 2013-11-18 | 243 |  |  | 0d |  |  | Ricardo Díaz; Alejandro Landero; Carlos Malagón; Daniel Banda; Eduardo Soriano | 200h |  |
| 245 | 2.3.4.9 | Arranque proveedores restantes para Anticipos/Importaciones/NC |  | 5d | 2013-11-19 | 2013-11-25 | 244 |  |  | 0d |  |  | Ricardo Díaz; Alejandro Landero; Carlos Malagón; Daniel Banda; Eduardo Soriano | 200h |  |
| 246 | 2.3.4.10 | Operación 100% Anticipos/Importaciones/NC | milestone | 0d | 2013-11-25 | 2013-11-25 | 241, 245 |  |  | 0d |  |  |  |  |  |
| 247 | 2.4 | **Aprovisionamiento de infraestructura** |  | 114.5d | 2013-03-20 A | 2013-08-27 |  | 98% | 2.29d | 47.5d |  |  |  | 1344h | 1320h |
| 248 | 2.4.1 | Instalación servidores temporales |  | 3d | 2013-03-20 A | 2013-03-22 A | 2 | 100% |  |  |  |  |  |  |  |
| 249 | 2.4.2 | Pruebas servidores temporales |  | 10d | 2013-03-25 A | 2013-04-05 A | 248 | 100% |  |  |  |  | Alejandro Hurtado; Carlos Malagón; Eduardo Soriano; Rogelio Esquivel | 296h | 296h |
| 250 | 2.4.3 | Confirmar servidores y arranque | milestone | 0d | 2013-04-05 A | 2013-04-05 A | 249 | 100% |  |  |  |  | Alejandro Hurtado; Carlos Malagón; Eduardo Soriano; Rogelio Esquivel |  |  |
| 251 | 2.4.4 | Liberación Pago | milestone | 0d | 2013-04-08 A | 2013-04-08 A |  | 100% |  |  |  | start no earlier than 2013-04-08 | Carlos Malagón |  |  |
| 252 | 2.4.5 | Instalación de servidores |  | 2w | 2013-04-08 A | 2013-04-19 A | 2, 251 | 100% |  |  |  |  | Alejandro Hurtado; Rogelio Esquivel | 160h | 160h |
| 253 | 2.4.6 | Servidor instalado y preparado | milestone | 0d | 2013-04-19 A | 2013-04-19 A | 252 | 100% |  |  |  |  | Alejandro Hurtado |  |  |
| 254 | 2.4.7 | Set up servidores Data Intensity |  | 9w | 2013-04-08 A | 2013-06-07 A | 251 | 100% |  |  |  |  |  |  |  |
| 255 | 2.4.8 | Arranque infraestructura Data Intensity | milestone | 0d | 2013-07-15 A | 2013-07-15 A | 254FS+1w | 100% |  |  |  | start no earlier than 2013-07-15 |  |  |  |
| 256 | 2.4.9 | Confirmación de información VPN |  | 1w | 2013-04-08 A | 2013-05-06 A | 2, 251 | 100% |  |  |  |  | Alejandro Hurtado | 40h | 40h |
| 257 | 2.4.10 | Integración información |  | 1w | 2013-05-06 A | 2013-05-13 A | 256 | 100% |  |  |  |  | Alejandro Hurtado | 40h | 40h |
| 258 | 2.4.11 | Ajuste de VPN |  | 3w | 2013-07-08 A | 2013-07-29 A | 257FS+2mo | 100% |  |  |  |  | Ricardo Díaz; Desarrollo Quadrantix | 240h | 240h |
| 259 | 2.4.12 | Pruebas VPN |  | 4d | 2013-07-29 A | 2013-08-02 A | 258 | 100% |  |  |  |  | Desarrollo Quadrantix; Telecom DS | 64h | 64h |
| 260 | 2.4.13 | VPN instalada | milestone | 0d | 2013-08-01 A | 2013-08-01 A | 259 | 100% |  |  |  |  | Ricardo Díaz |  |  |
| 261 | 2.4.14 | Pruebas de comunicación |  | 1w | 2013-08-01 A | 2013-08-08 A | 260 | 100% |  |  |  |  | Desarrollo Quadrantix | 40h | 40h |
| 262 | 2.4.15 | Pruebas de estrés |  | 2w | 2013-08-08 A | 2013-08-22 A | 261 | 100% |  |  |  |  | Desarrollo Quadrantix | 80h | 80h |
| 263 | 2.4.16 | Pruebas punta a punta |  | 3d | 2013-08-22 | 2013-08-27 | 262 |  |  | 47.5d | 0d |  | Desarrollo Quadrantix | 24h |  |
| 264 | 2.4.17 | VoBo infraestructura | milestone | 0d | 2013-08-27 | 2013-08-27 | 263 |  |  | 47.5d |  |  | Carlos Malagón; Alejandro Landero |  |  |
| 265 | 2.4.18 | Tareas de migración de información (Site QDX&DI) |  | 10d | 2013-07-15 A | 2013-07-26 A | 255 | 100% |  |  |  |  | Ricardo Díaz; Rogelio Esquivel | 160h | 160h |
| 266 | 2.4.19 | Configuración VPN QDX - DI |  | 20d | 2013-07-15 A | 2013-08-09 A | 255 | 100% |  |  |  |  |  |  |  |
| 267 | 2.4.20 | Aseguramiento calidad de información |  | 5d | 2013-08-12 A | 2013-08-16 A | 266 | 100% |  |  |  |  | Ricardo Díaz; Carlos Malagón; Eduardo Soriano; Rogelio Esquivel; Daniel Banda | 200h | 200h |
| 268 | 2.4.21 | Información migrada | milestone | 0d | 2013-08-16 A | 2013-08-16 A | 267 | 100% |  |  |  |  |  |  |  |

| ID | WBS | Task | Type | Duration | Start | Finish | Predecessors | Complete | Remaining | Total slack | Free slack | Constraint | Resources | Work | Actual work |
| --- | --- | --- | --- | --- | --- | --- | --- | --- | --- | --- | --- | --- | --- | --- | --- |
| 269 | 2.5 | **Capacitación** |  | 93d | 2013-07-18 A | 2013-11-25 |  | 57% | 39.72d | 20d |  |  |  | 752h | 400h |
| 270 | 2.5.1 | **Manual del usuario** |  | 30d | 2013-07-18 A | 2013-08-28 |  | 92% | 2.5d | 83d |  |  |  | 440h | 400h |
| 271 | 2.5.1.1 | Integración manual del usuario |  | 1mo | 2013-07-18 A | 2013-08-14 A |  | 100% |  |  |  | start no earlier than 2013-07-18 | Desarrollo Quadrantix; Alejandro Hurtado | 320h | 320h |
| 272 | 2.5.1.2 | Revisión manual del usuario |  | 1w | 2013-08-15 A | 2013-08-21 | 271 | 50% | 0.5w | 83d | 0d |  | Daniel Banda; Súper Usuarios GB | 80h | 40h |
| 273 | 2.5.1.3 | Ajuste manual |  | 1w | 2013-08-22 A | 2013-08-28 A | 272 | 100% |  |  |  |  | Desarrollo Quadrantix | 40h | 40h |
| 274 | 2.5.1.4 | VoBo manual | milestone | 0d | 2013-08-28 | 2013-08-28 | 273 |  |  | 83d |  |  | Daniel Banda |  |  |
| 275 | 2.5.2 | **Capacitación** |  | 10d | 2013-11-12 | 2013-11-25 |  |  |  | 20d |  |  |  | 312h |  |
| 276 | 2.5.2.1 | Preparación sesión de capacitación |  | 1w | 2013-11-12 | 2013-11-18 | 246FF-5d, 201, 37 |  |  | 20d | 0d |  | Daniel Banda; Carlos Malagón; Ricardo Díaz | 120h |  |
| 277 | 2.5.2.2 | Confirmación de sede |  | 3d | 2013-11-14 | 2013-11-18 | 276FF |  |  | 20d | 0d |  | Daniel Banda | 24h |  |
| 278 | 2.5.2.3 | Integración material capacitación (Presentación) |  | 1w | 2013-11-12 | 2013-11-18 | 277FF |  |  | 20d | 0d |  | Desarrollo Quadrantix; Ricardo Díaz | 80h |  |
| 279 | 2.5.2.4 | Revisión presentación capacitación |  | 3d | 2013-11-19 | 2013-11-21 | 278 |  |  | 20d | 0d |  | Alejandro Landero; Carlos Malagón; Ricardo Díaz | 72h |  |
| 280 | 2.5.2.5 | VoBo material capacitación | milestone | 0d | 2013-11-21 | 2013-11-21 | 279 |  |  | 20d | 0d |  | Alejandro Landero |  |  |
| 281 | 2.5.2.6 | Realización capacitación |  | 2d | 2013-11-22 | 2013-11-25 | 280 |  |  | 20d |  |  | Desarrollo Quadrantix | 16h |  |
| 282 | 2.6 | **Catálogos** |  | 94d | 2013-04-16 A | 2013-08-23 |  | 83% | 15.56d | 86d |  |  |  |  |  |
| 283 | 2.6.1 | Confirmar plan de trabajo de catálogos | milestone | 0d | 2013-04-16 A | 2013-04-16 A |  | 100% |  |  |  | start no earlier than 2013-04-16 | Jesús Mejía |  |  |
| 284 | 2.6.2 | Integración de catálogos |  | 4w | 2013-04-16 A | 2013-05-13 A | 283 | 100% |  |  |  |  |  |  |  |
| 285 | 2.6.3 | Validación |  | 1w | 2013-05-14 A | 2013-05-20 A | 284 | 100% |  |  |  |  |  |  |  |
| 286 | 2.6.4 | VoBo catálogos | milestone | 0d | 2013-05-20 A | 2013-05-20 A | 285 | 100% |  |  |  |  |  |  |  |
| 287 | 2.6.5 | **Catálogos Fase 2** |  | 20d | 2013-07-29 A | 2013-08-23 |  | 80% | 4d | 86d |  |  |  |  |  |
| 288 | 2.6.5.1 | Unidades operativas |  | 4w | 2013-07-29 A | 2013-08-23 A |  | 100% |  |  |  | start no earlier than 2013-07-29 |  |  |  |
| 289 | 2.6.5.2 | Organizaciones de inventario |  | 4w | 2013-07-29 A | 2013-08-23 A | 288SS | 100% |  |  |  |  |  |  |  |
| 290 | 2.6.5.3 | Cuentas Contables |  | 4w | 2013-07-29 A | 2013-08-23 | 289SS | 70% | 1.2w | 86d | 0d |  |  |  |  |
| 291 | 2.6.5.4 | Impuestos trasladados |  | 4w | 2013-07-29 A | 2013-08-23 | 290SS | 70% | 1.2w | 86d | 0d |  |  |  |  |
| 292 | 2.6.5.5 | Impuestos Retenidos |  | 4w | 2013-07-29 A | 2013-08-23 | 291SS | 70% | 1.2w | 86d | 0d |  |  |  |  |
| 293 | 2.6.5.6 | Empleados |  | 4w | 2013-07-29 A | 2013-08-23 | 292SS | 70% | 1.2w | 86d |  |  |  |  |  |

| ID | WBS | Task | Type | Duration | Start | Finish | Predecessors | Complete | Remaining | Total slack | Constraint | Resources | Work | Actual work |
| --- | --- | --- | --- | --- | --- | --- | --- | --- | --- | --- | --- | --- | --- | --- |
| 294 | 3 | **Cierre** |  | 20d | 2013-11-26 | 2013-12-23 |  |  |  | 0d |  |  | 560h |  |
| 295 | 3.1 | Entrega a Soporte CAP – Capgemini/HP/Sistemas16 |  | 4d | 2013-11-26 | 2013-11-29 | 246 |  |  | 0d |  | Carlos Malagón; Eduardo Soriano | 64h |  |
| 296 | 3.2 | Entrega a Soporte a HP |  | 1d | 2013-12-02 | 2013-12-02 | 295 |  |  | 0d |  | Carlos Malagón; Eduardo Soriano | 16h |  |
| 297 | 3.3 | Entrega a Soporte DS |  | 5d | 2013-12-03 | 2013-12-09 | 296 |  |  | 0d |  | Carlos Malagón; Eduardo Soriano | 80h |  |
| 298 | 3.4 | Lecciones aprendidas |  | 5d | 2013-12-10 | 2013-12-16 | 297 |  |  | 0d |  | Carlos Malagón; Eduardo Soriano; Daniel Banda; Alejandro Landero; Guadalupe Aragón; Isaac Aguado; Jesús Mejía; Mónica León | 320h |  |
| 299 | 3.5 | Carta de cierre de proyecto |  | 5d | 2013-12-17 | 2013-12-23 | 298 |  |  | 0d |  | Carlos Malagón; Eduardo Soriano | 80h |  |
| 300 | 3.6 | Cierre formal de proyecto / Carta de cierre | milestone | 0d | 2013-12-23 | 2013-12-23 | 299 |  |  | 0d |  | Carlos Malagón; Eduardo Soriano; Alejandro Landero |  |  |
| 301 | 4 | **Seguimiento** |  | 161d | 2013-03-29 A | 2013-11-08 |  | 67% | 53.67d | 31d |  |  | 2640h | 1760h |
| 302 | 4.1 | **Revisión semanal y actualización de RAP** |  | 161d | 2013-03-29 A | 2013-11-08 |  | 67% | 53.67d | 31d |  |  | 2640h | 1760h |
| 303 | 4.1.1 | Revisión semanal y actualización de RAP 1 |  | 1d | 2013-03-29 A | 2013-03-29 A |  | 100% |  |  | start no earlier than 2013-03-29 | Alejandro Hurtado; Alejandro Landero; Carlos Malagón; Daniel Banda; Eduardo Soriano; Guadalupe Aragón; Isaac Aguado; Jesús Mejía; Mónica León; Rogelio Esquivel | 80h | 80h |
| 304 | 4.1.2 | Revisión semanal y actualización de RAP 2 |  | 1d | 2013-04-05 A | 2013-04-05 A |  | 100% |  |  | start no earlier than 2013-04-05 | Alejandro Hurtado; Alejandro Landero; Carlos Malagón; Daniel Banda; Eduardo Soriano; Guadalupe Aragón; Isaac Aguado; Jesús Mejía; Mónica León; Rogelio Esquivel | 80h | 80h |
| 305 | 4.1.3 | Revisión semanal y actualización de RAP 3 |  | 1d | 2013-04-12 A | 2013-04-12 A |  | 100% |  |  | start no earlier than 2013-04-12 | Alejandro Hurtado; Alejandro Landero; Carlos Malagón; Daniel Banda; Eduardo Soriano; Guadalupe Aragón; Isaac Aguado; Jesús Mejía; Mónica León; Rogelio Esquivel | 80h | 80h |
| 306 | 4.1.4 | Revisión semanal y actualización de RAP 4 |  | 1d | 2013-04-19 A | 2013-04-19 A |  | 100% |  |  | start no earlier than 2013-04-19 | Alejandro Hurtado; Alejandro Landero; Carlos Malagón; Daniel Banda; Eduardo Soriano; Guadalupe Aragón; Isaac Aguado; Jesús Mejía; Mónica León; Rogelio Esquivel | 80h | 80h |
| 307 | 4.1.5 | Revisión semanal y actualización de RAP 5 |  | 1d | 2013-04-26 A | 2013-04-26 A |  | 100% |  |  | start no earlier than 2013-04-26 | Alejandro Hurtado; Alejandro Landero; Carlos Malagón; Daniel Banda; Eduardo Soriano; Guadalupe Aragón; Isaac Aguado; Jesús Mejía; Mónica León; Rogelio Esquivel | 80h | 80h |
| 308 | 4.1.6 | Revisión semanal y actualización de RAP 6 |  | 1d | 2013-05-03 A | 2013-05-03 A |  | 100% |  |  | start no earlier than 2013-05-03 | Alejandro Hurtado; Alejandro Landero; Carlos Malagón; Daniel Banda; Eduardo Soriano; Guadalupe Aragón; Isaac Aguado; Jesús Mejía; Mónica León; Rogelio Esquivel | 80h | 80h |
| 309 | 4.1.7 | Revisión semanal y actualización de RAP 7 |  | 1d | 2013-05-10 A | 2013-05-10 A |  | 100% |  |  | start no earlier than 2013-05-10 | Alejandro Hurtado; Alejandro Landero; Carlos Malagón; Daniel Banda; Eduardo Soriano; Guadalupe Aragón; Isaac Aguado; Jesús Mejía; Mónica León; Rogelio Esquivel | 80h | 80h |
| 310 | 4.1.8 | Revisión semanal y actualización de RAP 8 |  | 1d | 2013-05-17 A | 2013-05-17 A |  | 100% |  |  | start no earlier than 2013-05-17 | Alejandro Hurtado; Alejandro Landero; Carlos Malagón; Daniel Banda; Eduardo Soriano; Guadalupe Aragón; Isaac Aguado; Jesús Mejía; Mónica León; Rogelio Esquivel | 80h | 80h |
| 311 | 4.1.9 | Revisión semanal y actualización de RAP 9 |  | 1d | 2013-05-24 A | 2013-05-24 A |  | 100% |  |  | start no earlier than 2013-05-24 | Alejandro Hurtado; Alejandro Landero; Carlos Malagón; Daniel Banda; Eduardo Soriano; Guadalupe Aragón; Isaac Aguado; Jesús Mejía; Mónica León; Rogelio Esquivel | 80h | 80h |
| 312 | 4.1.10 | Revisión semanal y actualización de RAP 10 |  | 1d | 2013-05-31 A | 2013-05-31 A |  | 100% |  |  | start no earlier than 2013-05-31 | Alejandro Hurtado; Alejandro Landero; Carlos Malagón; Daniel Banda; Eduardo Soriano; Guadalupe Aragón; Isaac Aguado; Jesús Mejía; Mónica León; Rogelio Esquivel | 80h | 80h |
| 313 | 4.1.11 | Revisión semanal y actualización de RAP 11 |  | 1d | 2013-06-07 A | 2013-06-07 A |  | 100% |  |  | start no earlier than 2013-06-07 | Alejandro Hurtado; Alejandro Landero; Carlos Malagón; Daniel Banda; Eduardo Soriano; Guadalupe Aragón; Isaac Aguado; Jesús Mejía; Mónica León; Rogelio Esquivel | 80h | 80h |
| 314 | 4.1.12 | Revisión semanal y actualización de RAP 12 |  | 1d | 2013-06-14 A | 2013-06-14 A |  | 100% |  |  | start no earlier than 2013-06-14 | Alejandro Hurtado; Alejandro Landero; Carlos Malagón; Daniel Banda; Eduardo Soriano; Guadalupe Aragón; Isaac Aguado; Jesús Mejía; Mónica León; Rogelio Esquivel | 80h | 80h |
| 315 | 4.1.13 | Revisión semanal y actualización de RAP 13 |  | 1d | 2013-06-21 A | 2013-06-21 A |  | 100% |  |  | start no earlier than 2013-06-21 | Alejandro Hurtado; Alejandro Landero; Carlos Malagón; Daniel Banda; Eduardo Soriano; Guadalupe Aragón; Jesús Mejía; Mónica León; Isaac Aguado; Rogelio Esquivel | 80h | 80h |
| 316 | 4.1.14 | Revisión semanal y actualización de RAP 14 |  | 1d | 2013-06-28 A | 2013-06-28 A |  | 100% |  |  | start no earlier than 2013-06-28 | Alejandro Hurtado; Alejandro Landero; Carlos Malagón; Daniel Banda; Eduardo Soriano; Guadalupe Aragón; Jesús Mejía; Mónica León; Isaac Aguado; Rogelio Esquivel | 80h | 80h |
| 317 | 4.1.15 | Revisión semanal y actualización de RAP 15 |  | 1d | 2013-07-05 A | 2013-07-05 A |  | 100% |  |  | start no earlier than 2013-07-05 | Alejandro Hurtado; Alejandro Landero; Carlos Malagón; Daniel Banda; Eduardo Soriano; Guadalupe Aragón; Jesús Mejía; Mónica León; Isaac Aguado; Rogelio Esquivel | 80h | 80h |
| 318 | 4.1.16 | Revisión semanal y actualización de RAP 16 |  | 1d | 2013-07-12 A | 2013-07-12 A |  | 100% |  |  | start no earlier than 2013-07-12 | Alejandro Hurtado; Alejandro Landero; Carlos Malagón; Daniel Banda; Eduardo Soriano; Guadalupe Aragón; Jesús Mejía; Mónica León; Isaac Aguado; Rogelio Esquivel | 80h | 80h |
| 319 | 4.1.17 | Revisión semanal y actualización de RAP 17 |  | 1d | 2013-07-19 A | 2013-07-19 A |  | 100% |  |  | start no earlier than 2013-07-19 | Ricardo Díaz; Alejandro Landero; Carlos Malagón; Daniel Banda; Eduardo Soriano; Guadalupe Aragón; Jesús Mejía; Mónica León; Isaac Aguado; Rogelio Esquivel | 80h | 80h |
| 320 | 4.1.18 | Revisión semanal y actualización de RAP 18 |  | 1d | 2013-07-26 A | 2013-07-26 A |  | 100% |  |  | start no earlier than 2013-07-26 | Ricardo Díaz; Alejandro Landero; Carlos Malagón; Daniel Banda; Eduardo Soriano; Guadalupe Aragón; Jesús Mejía; Mónica León; Isaac Aguado; Rogelio Esquivel | 80h | 80h |
| 321 | 4.1.19 | Revisión semanal y actualización de RAP 19 |  | 1d | 2013-08-02 A | 2013-08-02 A |  | 100% |  |  | start no earlier than 2013-08-02 | Ricardo Díaz; Alejandro Landero; Carlos Malagón; Daniel Banda; Eduardo Soriano; Guadalupe Aragón; Jesús Mejía; Mónica León; Isaac Aguado; Rogelio Esquivel | 80h | 80h |
| 322 | 4.1.20 | Revisión semanal y actualización de RAP 20 |  | 1d | 2013-08-09 A | 2013-08-09 A |  | 100% |  |  | start no earlier than 2013-08-09 | Ricardo Díaz; Alejandro Landero; Carlos Malagón; Daniel Banda; Eduardo Soriano; Guadalupe Aragón; Jesús Mejía; Mónica León; Isaac Aguado; Rogelio Esquivel | 80h | 80h |
| 323 | 4.1.21 | Revisión semanal y actualización de RAP 21 |  | 1d | 2013-08-16 A | 2013-08-16 A |  | 100% |  |  | start no earlier than 2013-08-16 | Ricardo Díaz; Alejandro Landero; Carlos Malagón; Daniel Banda; Eduardo Soriano; Guadalupe Aragón; Jesús Mejía; Mónica León; Isaac Aguado; Rogelio Esquivel | 80h | 80h |
| 324 | 4.1.22 | Revisión semanal y actualización de RAP 22 |  | 1d | 2013-08-23 A | 2013-08-23 A |  | 100% |  |  | start no earlier than 2013-08-23 | Ricardo Díaz; Alejandro Landero; Carlos Malagón; Daniel Banda; Eduardo Soriano; Guadalupe Aragón; Jesús Mejía; Mónica León; Isaac Aguado; Rogelio Esquivel | 80h | 80h |
| 325 | 4.1.23 | Revisión semanal y actualización de RAP 23 |  | 1d | 2013-08-30 | 2013-08-30 |  |  |  | 81d | start no earlier than 2013-08-30 | Ricardo Díaz; Alejandro Landero; Carlos Malagón; Daniel Banda; Eduardo Soriano; Guadalupe Aragón; Jesús Mejía; Mónica León; Isaac Aguado; Rogelio Esquivel | 80h |  |
| 326 | 4.1.24 | Revisión semanal y actualización de RAP 24 |  | 1d | 2013-09-06 | 2013-09-06 |  |  |  | 76d | start no earlier than 2013-09-06 | Ricardo Díaz; Alejandro Landero; Carlos Malagón; Daniel Banda; Eduardo Soriano; Guadalupe Aragón; Jesús Mejía; Mónica León; Isaac Aguado; Rogelio Esquivel | 80h |  |
| 327 | 4.1.25 | Revisión semanal y actualización de RAP 25 |  | 1d | 2013-09-13 | 2013-09-13 |  |  |  | 71d | start no earlier than 2013-09-13 | Ricardo Díaz; Alejandro Landero; Carlos Malagón; Daniel Banda; Eduardo Soriano; Guadalupe Aragón; Jesús Mejía; Mónica León; Isaac Aguado; Rogelio Esquivel | 80h |  |
| 328 | 4.1.26 | Revisión semanal y actualización de RAP 26 |  | 1d | 2013-09-20 | 2013-09-20 |  |  |  | 66d | start no earlier than 2013-09-20 | Ricardo Díaz; Alejandro Landero; Carlos Malagón; Daniel Banda; Eduardo Soriano; Guadalupe Aragón; Jesús Mejía; Mónica León; Isaac Aguado; Rogelio Esquivel | 80h |  |
| 329 | 4.1.27 | Revisión semanal y actualización de RAP 27 |  | 1d | 2013-09-27 | 2013-09-27 |  |  |  | 61d | start no earlier than 2013-09-27 | Ricardo Díaz; Alejandro Landero; Carlos Malagón; Daniel Banda; Eduardo Soriano; Guadalupe Aragón; Jesús Mejía; Mónica León; Isaac Aguado; Rogelio Esquivel | 80h |  |
| 330 | 4.1.28 | Revisión semanal y actualización de RAP 28 |  | 1d | 2013-10-04 | 2013-10-04 |  |  |  | 56d | start no earlier than 2013-10-04 | Ricardo Díaz; Alejandro Landero; Carlos Malagón; Daniel Banda; Eduardo Soriano; Guadalupe Aragón; Jesús Mejía; Mónica León; Isaac Aguado; Rogelio Esquivel | 80h |  |
| 331 | 4.1.29 | Revisión semanal y actualización de RAP 29 |  | 1d | 2013-10-11 | 2013-10-11 |  |  |  | 51d | start no earlier than 2013-10-11 | Ricardo Díaz; Alejandro Landero; Carlos Malagón; Daniel Banda; Eduardo Soriano; Guadalupe Aragón; Jesús Mejía; Mónica León; Isaac Aguado; Rogelio Esquivel | 80h |  |
| 332 | 4.1.30 | Revisión semanal y actualización de RAP 30 |  | 1d | 2013-10-18 | 2013-10-18 |  |  |  | 46d | start no earlier than 2013-10-18 | Ricardo Díaz; Alejandro Landero; Carlos Malagón; Daniel Banda; Eduardo Soriano; Guadalupe Aragón; Jesús Mejía; Mónica León; Isaac Aguado; Rogelio Esquivel | 80h |  |
| 333 | 4.1.31 | Revisión semanal y actualización de RAP 31 |  | 1d | 2013-10-25 | 2013-10-25 |  |  |  | 41d | start no earlier than 2013-10-25 | Ricardo Díaz; Alejandro Landero; Carlos Malagón; Daniel Banda; Eduardo Soriano; Guadalupe Aragón; Jesús Mejía; Mónica León; Isaac Aguado; Rogelio Esquivel | 80h |  |
| 334 | 4.1.32 | Revisión semanal y actualización de RAP 32 |  | 1d | 2013-11-01 | 2013-11-01 |  |  |  | 36d | start no earlier than 2013-11-01 | Ricardo Díaz; Alejandro Landero; Carlos Malagón; Daniel Banda; Eduardo Soriano; Guadalupe Aragón; Jesús Mejía; Mónica León; Isaac Aguado; Rogelio Esquivel | 80h |  |
| 335 | 4.1.33 | Revisión semanal y actualización de RAP 33 |  | 1d | 2013-11-08 | 2013-11-08 |  |  |  | 31d | start no earlier than 2013-11-08 | Ricardo Díaz; Alejandro Landero; Carlos Malagón; Daniel Banda; Eduardo Soriano; Guadalupe Aragón; Jesús Mejía; Mónica León; Isaac Aguado; Rogelio Esquivel | 80h |  |

| ID | WBS | Task | Duration | Start | Finish | Predecessors | Complete | Remaining | Total slack | Free slack | Constraint |
| --- | --- | --- | --- | --- | --- | --- | --- | --- | --- | --- | --- |
| 336 | 5 | **T&T** | 76d | 2013-07-12 A | 2013-10-25 |  | 77% | 17.16d | 41d |  |  |
| 337 | 5.1 | **Máximo 200 y 300** | 4d | 2013-07-26 A | 2013-07-31 A |  | 100% |  |  |  |  |
| 338 | 5.1.1 | CutOver | 1d | 2013-07-26 A | 2013-07-26 A |  | 100% |  |  |  | start no earlier than 2013-07-26 |
| 339 | 5.1.2 | UAT | 3d | 2013-07-29 A | 2013-07-31 A | 338 | 100% |  |  |  |  |
| 340 | 5.2 | **Máximo 500** | 6d | 2013-10-18 A | 2013-10-25 A |  | 100% |  |  |  |  |
| 341 | 5.2.1 | CutOver | 1d | 2013-10-18 A | 2013-10-18 A |  | 100% |  |  |  | start no earlier than 2013-10-18 |
| 342 | 5.2.2 | UAT | 5d | 2013-10-21 A | 2013-10-25 A | 341 | 100% |  |  |  |  |
| 343 | 5.3 | **ERP 200 y 300** | 14d | 2013-07-12 A | 2013-07-31 A |  | 100% |  |  |  |  |
| 344 | 5.3.1 | CutOver | 1d | 2013-07-12 A | 2013-07-12 A |  | 100% |  |  |  | start no earlier than 2013-07-12 |
| 345 | 5.3.2 | UAT | 13d | 2013-07-15 A | 2013-07-31 A | 344 | 100% |  |  |  |  |
| 346 | 5.4 | **ERP 500** | 7d | 2013-10-11 | 2013-10-21 |  |  |  | 45d |  |  |
| 347 | 5.4.1 | CutOver | 1d | 2013-10-11 | 2013-10-11 |  |  |  | 45d | 0d | start no earlier than 2013-10-11 |
| 348 | 5.4.2 | UAT | 6d | 2013-10-14 | 2013-10-21 | 347 |  |  | 45d |  |  |
